# WRR AODocs - Cronograma

Schedule from MS Project XML, 2014-07-29 to 2014-11-21, costs in R$, A marks actual dates.

## Calendars

- Standard: Mon-Fri 08:00-12:00, 13:00-17:00; Sat-Sun off. Exceptions (off unless hours are given): 2014-11-20 (Day).

## Resources

| Resource |
| --- |
| Analista Dedalus |
| WRR |
| Gerente Dedalus |
| AODocs |

## Schedule

| ID | WBS | Task | Duration | Start | Finish | Predecessors | Remaining | Total slack | Resources | Work | Cost |
| --- | --- | --- | --- | --- | --- | --- | --- | --- | --- | --- | --- |
| 1 | 1 | **Planejamento** | 5.38d | 2014-07-29 08:00 A | 2014-08-05 11:00 |  | 5.38d | 0d |  | 89h | 79.5 |
| 2 | 1.1 | Kick-off | 1h | 2014-07-29 08:00 A | 2014-07-29 09:00 |  | 1h | 0d | Gerente Dedalus | 1h | 1.5 |
| 3 | 1.2 | Alinhamento com analistas | 1d | 2014-07-29 09:00 A | 2014-07-30 09:00 | 2 | 1d | 0d | Analista Dedalus; Gerente Dedalus | 16h | 24 |
| 4 | 1.3 | **Levantamento** | 4.25d | 2014-07-30 09:00 A | 2014-08-05 11:00 | 3 | 4.25d | 0d |  | 72h | 54 |
| 5 | 1.3.1 | Validação dos workflows | 4h | 2014-07-30 09:00 A | 2014-07-30 14:00 |  | 4h | 0d | Analista Dedalus; WRR | 8h | 6 |
| 6 | 1.3.2 | Levantamento dos papéis | 2h | 2014-07-30 09:00 A | 2014-07-30 11:00 |  | 2h | 0d | Analista Dedalus; WRR | 4h | 3 |
| 7 | 1.3.3 | Levantamento do conteúdo das tabelas associadas | 3d | 2014-07-30 16:00 A | 2014-08-04 16:00 |  | 3d | 0d | Analista Dedalus; WRR | 48h | 36 |
| 8 | 1.3.4 | Definição de nomes de biblioteca | 2h | 2014-08-04 16:00 A | 2014-08-05 09:00 |  | 2h | 0d | Analista Dedalus; WRR | 4h | 3 |
| 9 | 1.3.5 | Definição de pasta para exportação das informações | 2h | 2014-08-05 08:00 A | 2014-08-05 10:00 |  | 2h | 0d | Analista Dedalus; WRR | 4h | 3 |
| 10 | 1.3.6 | Definição dos emails para recebimento dos documentos | 2h | 2014-08-05 09:00 A | 2014-08-05 11:00 |  | 2h | 0d | Analista Dedalus; WRR | 4h | 3 |
| 11 | 2 | Validação técnica da solução | 3d | 2014-08-05 14:00 A | 2014-08-08 14:00 | 1 | 3d | 0d | Analista Dedalus; AODocs | 48h | 36 |
| 12 | 3 | **Tabelas associadas** | 12.38d | 2014-08-08 14:00 A | 2014-08-26 17:00 | 11 | 12.38d | 0d |  | 92h | 138 |
| 13 | 3.1 | Criação da biblioteca | 1h | 2014-08-08 14:00 A | 2014-08-08 15:00 |  | 1h | 0d | Analista Dedalus | 1h | 1.5 |
| 14 | 3.2 | **Preparação** | 2.5d | 2014-08-08 15:00 A | 2014-08-13 10:00 | 13 | 2.5d | 0d |  | 13h | 19.5 |
| 15 | 3.2.1 | **Configuração das classes de documento** | 1.38d | 2014-08-08 15:00 A | 2014-08-12 09:00 |  | 1.38d | 0d |  | 11h | 16.5 |
| 16 | 3.2.1.1 | Coligadas | 1h | 2014-08-08 15:00 A | 2014-08-08 16:00 |  | 1h | 0d | Analista Dedalus | 1h | 1.5 |
| 17 | 3.2.1.2 | Tipos de documento | 1h | 2014-08-08 15:00 A | 2014-08-08 16:00 |  | 1h | 0d | Analista Dedalus | 1h | 1.5 |
| 18 | 3.2.1.3 | Contratos | 1h | 2014-08-11 08:00 A | 2014-08-11 09:00 |  | 1h | 0d | Analista Dedalus | 1h | 1.5 |
| 19 | 3.2.1.4 | CPFs | 1h | 2014-08-11 08:00 A | 2014-08-11 09:00 |  | 1h | 0d | Analista Dedalus | 1h | 1.5 |
| 20 | 3.2.1.5 | Centros de custo | 1h | 2014-08-11 09:00 A | 2014-08-11 10:00 |  | 1h | 0d | Analista Dedalus | 1h | 1.5 |
| 21 | 3.2.1.6 | Fornecedores | 1h | 2014-08-11 11:00 A | 2014-08-11 12:00 |  | 1h | 0d | Analista Dedalus | 1h | 1.5 |
| 22 | 3.2.1.7 | Meses | 1h | 2014-08-11 10:00 A | 2014-08-11 11:00 |  | 1h | 0d | Analista Dedalus | 1h | 1.5 |
| 23 | 3.2.1.8 | Anos | 1h | 2014-08-11 14:00 A | 2014-08-11 15:00 |  | 1h | 0d | Analista Dedalus | 1h | 1.5 |
| 24 | 3.2.1.9 | Serviços | 1h | 2014-08-11 14:00 A | 2014-08-11 15:00 |  | 1h | 0d | Analista Dedalus | 1h | 1.5 |
| 25 | 3.2.1.10 | Mercados | 1h | 2014-08-11 15:00 A | 2014-08-11 16:00 |  | 1h | 0d | Analista Dedalus | 1h | 1.5 |
| 26 | 3.2.1.11 | Clientes | 1h | 2014-08-12 08:00 A | 2014-08-12 09:00 |  | 1h | 0d | Analista Dedalus | 1h | 1.5 |
| 27 | 3.2.2 | Configuração dos papéis | 2h | 2014-08-13 08:00 A | 2014-08-13 10:00 | 15 | 2h | 0d | Analista Dedalus | 2h | 3 |

| ID | WBS | Task | Duration | Start | Finish | Predecessors | Remaining | Total slack | Resources | Work | Cost |
| --- | --- | --- | --- | --- | --- | --- | --- | --- | --- | --- | --- |
| 28 | 3.3 | **Scripts** | 9.75d | 2014-08-13 10:00 A | 2014-08-26 17:00 |  | 9.75d | 0d |  | 78h | 117 |
| 29 | 3.3.1 | Criação do modelo de script de importação | 3d | 2014-08-13 10:00 A | 2014-08-18 10:00 |  | 3d | 0d | Analista Dedalus | 24h | 36 |
| 30 | 3.3.2 | Criação das importações das tabelas associadas | 22h | 2014-08-18 10:00 A | 2014-08-20 17:00 | 29 | 22h | 0d | Analista Dedalus | 22h | 33 |
| 31 | 3.3.3 | Criação de script de validação de CPF | 1d | 2014-08-21 08:00 A | 2014-08-21 17:00 |  | 1d | 0d | Analista Dedalus | 8h | 12 |
| 32 | 3.3.4 | Criação do script de exportação | 3d | 2014-08-22 08:00 A | 2014-08-26 17:00 |  | 3d | 0d | Analista Dedalus | 24h | 36 |
| 33 | 4 | **Fluxos** | 61d | 2014-08-27 08:00 A | 2014-11-19 17:00 | 12 | 61d | 0d |  | 543h | 622.5 |
| 34 | 4.1 | **Documentos de Afastamento, Licenciamento ou Ausência** | 6.75d | 2014-08-27 08:00 A | 2014-09-04 15:00 |  | 6.75d | 0d |  | 60h | 66 |
| 35 | 4.1.1 | Criação da biblioteca | 1h | 2014-08-27 08:00 A | 2014-08-27 09:00 |  | 1h | 0d | Analista Dedalus | 1h | 1.5 |
| 36 | 4.1.2 | **Preparação** | 1.88d | 2014-08-27 09:00 A | 2014-08-28 17:00 | 35 | 1.88d | 0d |  | 14h | 21 |
| 37 | 4.1.2.1 | **Configuração das classes de documento** | 0.62d | 2014-08-27 09:00 A | 2014-08-27 15:00 |  | 0.62d | 0d |  | 5h | 7.5 |
| 38 | 4.1.2.1.1 | Documentos de Afastamento, Licenciamento e Ausencia (principal) | 1h | 2014-08-27 09:00 A | 2014-08-27 10:00 |  | 1h | 0d | Analista Dedalus | 1h | 1.5 |
| 39 | 4.1.2.1.2 | Coligadas | 1h | 2014-08-27 10:00 A | 2014-08-27 11:00 |  | 1h | 0d | Analista Dedalus | 1h | 1.5 |
| 40 | 4.1.2.1.3 | Contratos | 1h | 2014-08-27 11:00 A | 2014-08-27 12:00 |  | 1h | 0d | Analista Dedalus | 1h | 1.5 |
| 41 | 4.1.2.1.4 | Tipos de documento | 1h | 2014-08-27 11:00 A | 2014-08-27 12:00 |  | 1h | 0d | Analista Dedalus | 1h | 1.5 |
| 42 | 4.1.2.1.5 | CPFs | 1h | 2014-08-27 14:00 A | 2014-08-27 15:00 |  | 1h | 0d | Analista Dedalus | 1h | 1.5 |
| 43 | 4.1.2.2 | Instalação e configuração dos scripts para importação das tabelas associadas | 4h | 2014-08-27 16:00 A | 2014-08-28 11:00 | 37 | 4h | 0d | Analista Dedalus | 4h | 6 |
| 44 | 4.1.2.3 | Configuração das relações entre as classes | 2h | 2014-08-28 09:00 A | 2014-08-28 11:00 | 37 | 2h | 0d | Analista Dedalus | 2h | 3 |
| 45 | 4.1.2.4 | Configuração dos papéis | 2h | 2014-08-28 13:00 A | 2014-08-28 15:00 | 37 | 2h | 0d | Analista Dedalus | 2h | 3 |
| 46 | 4.1.2.5 | Configuração do email para recebimentos dos documentos | 1h | 2014-08-28 16:00 A | 2014-08-28 17:00 | 37 | 1h | 0d | Analista Dedalus | 1h | 1.5 |
| 47 | 4.1.3 | **Criação do workflow** | 0.62d | 2014-09-01 09:00 A | 2014-09-01 15:00 | 36 | 0.62d | 0d |  | 5h | 7.5 |
| 48 | 4.1.3.1 | Criação de 2 etapas com notificações e permissões | 4h | 2014-09-01 09:00 A | 2014-09-01 14:00 |  | 4h | 0d | Analista Dedalus | 4h | 6 |
| 49 | 4.1.3.2 | Atribuição dos acessos | 1h | 2014-09-01 14:00 A | 2014-09-01 15:00 | 48 | 1h | 0d | Analista Dedalus | 1h | 1.5 |
| 50 | 4.1.4 | **Relatórios** | 1d | 2014-09-01 15:00 A | 2014-09-02 15:00 | 47 | 1d | 0d |  | 8h | 12 |
| 51 | 4.1.4.1 | Instalação e configuração do script para exportar em Google Spreadsheet | 1d | 2014-09-01 15:00 A | 2014-09-02 15:00 |  | 1d | 0d | Analista Dedalus | 8h | 12 |
| 52 | 4.1.5 | Testes e correções | 2d | 2014-09-02 15:00 A | 2014-09-04 15:00 | 50 | 2d | 0d | Analista Dedalus; WRR | 32h | 24 |

| ID | WBS | Task | Duration | Start | Finish | Predecessors | Remaining | Total slack | Resources | Work | Cost |
| --- | --- | --- | --- | --- | --- | --- | --- | --- | --- | --- | --- |
| 53 | 4.2 | **Documentos de Contas a Pagar** | 7.25d | 2014-09-04 15:00 A | 2014-09-15 17:00 | 34 | 7.25d | 0d |  | 67h | 76.5 |
| 54 | 4.2.1 | Criação da biblioteca | 1h | 2014-09-04 15:00 A | 2014-09-04 16:00 |  | 1h | 0d | Analista Dedalus | 1h | 1.5 |
| 55 | 4.2.2 | **Preparação** | 2.25d | 2014-09-04 16:00 A | 2014-09-09 09:00 | 54 | 2.25d | 0d |  | 14h | 21 |
| 56 | 4.2.2.1 | **Configuração das classes de documento** | 0.62d | 2014-09-04 16:00 A | 2014-09-05 12:00 |  | 0.62d | 0d |  | 5h | 7.5 |
| 57 | 4.2.2.1.1 | Documentos de Contas a Pagar (principal) | 1h | 2014-09-04 16:00 A | 2014-09-04 17:00 |  | 1h | 0d | Analista Dedalus | 1h | 1.5 |
| 58 | 4.2.2.1.2 | Coligadas | 1h | 2014-09-05 08:00 A | 2014-09-05 09:00 |  | 1h | 0d | Analista Dedalus | 1h | 1.5 |
| 59 | 4.2.2.1.3 | Tipos de documento | 1h | 2014-09-05 09:00 A | 2014-09-05 10:00 |  | 1h | 0d | Analista Dedalus | 1h | 1.5 |
| 60 | 4.2.2.1.4 | Centros de custo | 1h | 2014-09-05 10:00 A | 2014-09-05 11:00 |  | 1h | 0d | Analista Dedalus | 1h | 1.5 |
| 61 | 4.2.2.1.5 | Fornecedores | 1h | 2014-09-05 11:00 A | 2014-09-05 12:00 |  | 1h | 0d | Analista Dedalus | 1h | 1.5 |
| 62 | 4.2.2.2 | Instalação e configuração dos scripts para importação das tabelas associadas | 4h | 2014-09-08 08:00 A | 2014-09-08 12:00 | 56 | 4h | 0d | Analista Dedalus | 4h | 6 |
| 63 | 4.2.2.3 | Configuração das relações entre as classes | 2h | 2014-09-08 10:00 A | 2014-09-08 12:00 | 56 | 2h | 0d | Analista Dedalus | 2h | 3 |
| 64 | 4.2.2.4 | Configuração dos papéis | 2h | 2014-09-08 13:00 A | 2014-09-08 15:00 | 56 | 2h | 0d | Analista Dedalus | 2h | 3 |
| 65 | 4.2.2.5 | Configuração do email para recebimentos dos documentos | 1h | 2014-09-09 08:00 A | 2014-09-09 09:00 | 56 | 1h | 0d | Analista Dedalus | 1h | 1.5 |
| 66 | 4.2.3 | **Criação do workflow** | 1.5d | 2014-09-09 11:00 A | 2014-09-10 16:00 | 55 | 1.5d | 0d |  | 12h | 18 |
| 67 | 4.2.3.1 | Criação de 5 etapas com notificações e permissões | 10h | 2014-09-09 11:00 A | 2014-09-10 14:00 |  | 10h | 0d | Analista Dedalus | 10h | 15 |
| 68 | 4.2.3.2 | Atribuição dos acessos | 1h | 2014-09-10 14:00 A | 2014-09-10 15:00 | 67 | 1h | 0d | Analista Dedalus | 1h | 1.5 |
| 69 | 4.2.3.3 | Instalação e configuração do script para validação do CPF | 1h | 2014-09-10 15:00 A | 2014-09-10 16:00 | 67 | 1h | 0d | Analista Dedalus | 1h | 1.5 |
| 70 | 4.2.4 | **Relatórios** | 1d | 2014-09-11 08:00 A | 2014-09-11 17:00 | 66 | 1d | 0d |  | 8h | 12 |
| 71 | 4.2.4.1 | Instalação e configuração do script para exportar em Google Spreadsheet | 1d | 2014-09-11 08:00 A | 2014-09-11 17:00 |  | 1d | 0d | Analista Dedalus | 8h | 12 |
| 72 | 4.2.5 | Testes e correções | 2d | 2014-09-12 08:00 A | 2014-09-15 17:00 | 70 | 2d | 0d | Analista Dedalus; WRR | 32h | 24 |
| 73 | 4.3 | **Documentos de Contratação** | 8.25d | 2014-09-16 08:00 A | 2014-09-26 10:00 | 53 | 8.25d | 0d |  | 74h | 87 |
| 74 | 4.3.1 | Criação da biblioteca | 1h | 2014-09-16 08:00 A | 2014-09-16 09:00 |  | 1h | 0d | Analista Dedalus | 1h | 1.5 |
| 75 | 4.3.2 | **Preparação** | 3.62d | 2014-09-16 09:00 A | 2014-09-19 15:00 | 74 | 3.62d | 0d |  | 25h | 37.5 |
| 76 | 4.3.2.1 | **Configuração das classes de documento** | 0.88d | 2014-09-16 09:00 A | 2014-09-16 17:00 |  | 0.88d | 0d |  | 7h | 10.5 |
| 77 | 4.3.2.1.1 | Documentos de Contratação (principal) | 1h | 2014-09-16 09:00 A | 2014-09-16 10:00 |  | 1h | 0d | Analista Dedalus | 1h | 1.5 |
| 78 | 4.3.2.1.2 | Coligadas | 2h | 2014-09-16 10:00 A | 2014-09-16 12:00 |  | 2h | 0d | Analista Dedalus | 2h | 3 |
| 79 | 4.3.2.1.3 | Contratos | 2h | 2014-09-16 13:00 A | 2014-09-16 15:00 |  | 2h | 0d | Analista Dedalus | 2h | 3 |
| 80 | 4.3.2.1.4 | Tipos de documento | 2h | 2014-09-16 15:00 A | 2014-09-16 17:00 |  | 2h | 0d | Analista Dedalus | 2h | 3 |
| 81 | 4.3.2.2 | Instalação e configuração dos scripts para importação das tabelas associadas | 8h | 2014-09-17 14:00 A | 2014-09-18 14:00 | 76 | 8h | 0d | Analista Dedalus | 8h | 12 |
| 82 | 4.3.2.3 | Configuração das relações entre as classes | 4h | 2014-09-18 14:00 A | 2014-09-19 09:00 | 76 | 4h | 0d | Analista Dedalus | 4h | 6 |
| 83 | 4.3.2.4 | Configuração dos papéis | 4h | 2014-09-19 09:00 A | 2014-09-19 14:00 | 76 | 4h | 0d | Analista Dedalus | 4h | 6 |
| 84 | 4.3.2.5 | Configuração do email para recebimentos dos documentos | 2h | 2014-09-19 13:00 A | 2014-09-19 15:00 | 76 | 2h | 0d | Analista Dedalus | 2h | 3 |

| ID | WBS | Task | Duration | Start | Finish | Predecessors | Remaining | Total slack | Resources | Work | Cost |
| --- | --- | --- | --- | --- | --- | --- | --- | --- | --- | --- | --- |
| 85 | 4.3.3 | **Criação do workflow** | 0.88d | 2014-09-22 10:00 A | 2014-09-23 09:00 | 75 | 0.88d | 0d |  | 8h | 12 |
| 86 | 4.3.3.1 | Criação de 3 etapas com notificações e permissões | 6h | 2014-09-22 10:00 A | 2014-09-22 17:00 |  | 6h | 0d | Analista Dedalus | 6h | 9 |
| 87 | 4.3.3.2 | Atribuição dos acessos | 1h | 2014-09-23 08:00 A | 2014-09-23 09:00 | 86 | 1h | 0d | Analista Dedalus | 1h | 1.5 |
| 88 | 4.3.3.3 | Instalação e configuração do script para validação do CPF | 1h | 2014-09-23 08:00 A | 2014-09-23 09:00 | 86 | 1h | 0d | Analista Dedalus | 1h | 1.5 |
| 89 | 4.3.4 | **Relatórios** | 1d | 2014-09-23 10:00 A | 2014-09-24 10:00 | 85 | 1d | 0d |  | 8h | 12 |
| 90 | 4.3.4.1 | Instalação e configuração do script para exportar em Google Spreadsheet | 1d | 2014-09-23 10:00 A | 2014-09-24 10:00 |  | 1d | 0d | Analista Dedalus | 8h | 12 |
| 91 | 4.3.5 | Testes e correções | 2d | 2014-09-24 10:00 A | 2014-09-26 10:00 | 89 | 2d | 0d | Analista Dedalus; WRR | 32h | 24 |
| 92 | 4.4 | **Documentos de Demissão** | 6.62d | 2014-09-26 10:00 A | 2014-10-06 16:00 | 73 | 6.62d | 0d |  | 60h | 66 |
| 93 | 4.4.1 | Criação da biblioteca | 1h | 2014-09-26 10:00 A | 2014-09-26 11:00 |  | 1h | 0d | Analista Dedalus | 1h | 1.5 |
| 94 | 4.4.2 | **Preparação** | 2.12d | 2014-09-26 11:00 A | 2014-09-30 12:00 | 93 | 2.12d | 0d |  | 14h | 21 |
| 95 | 4.4.2.1 | **Configuração das classes de documento** | 0.5d | 2014-09-26 11:00 A | 2014-09-26 16:00 |  | 0.5d | 0d |  | 5h | 7.5 |
| 96 | 4.4.2.1.1 | Documentos de Demissão (principal) | 1h | 2014-09-26 11:00 A | 2014-09-26 12:00 |  | 1h | 0d | Analista Dedalus | 1h | 1.5 |
| 97 | 4.4.2.1.2 | Coligadas | 1h | 2014-09-26 13:00 A | 2014-09-26 14:00 |  | 1h | 0d | Analista Dedalus | 1h | 1.5 |
| 98 | 4.4.2.1.3 | Contratos | 1h | 2014-09-26 14:00 A | 2014-09-26 15:00 |  | 1h | 0d | Analista Dedalus | 1h | 1.5 |
| 99 | 4.4.2.1.4 | Tipos de documento | 1h | 2014-09-26 15:00 A | 2014-09-26 16:00 |  | 1h | 0d | Analista Dedalus | 1h | 1.5 |
| 100 | 4.4.2.1.5 | CPFs | 1h | 2014-09-26 15:00 A | 2014-09-26 16:00 |  | 1h | 0d | Analista Dedalus | 1h | 1.5 |
| 101 | 4.4.2.2 | Instalação e configuração dos scripts para importação das tabelas associadas | 4h | 2014-09-29 11:00 A | 2014-09-29 16:00 | 95 | 4h | 0d | Analista Dedalus | 4h | 6 |
| 102 | 4.4.2.3 | Configuração das relações entre as classes | 2h | 2014-09-29 13:00 A | 2014-09-29 15:00 | 95 | 2h | 0d | Analista Dedalus | 2h | 3 |
| 103 | 4.4.2.4 | Configuração dos papéis | 2h | 2014-09-29 14:00 A | 2014-09-29 16:00 | 95 | 2h | 0d | Analista Dedalus | 2h | 3 |
| 104 | 4.4.2.5 | Configuração do email para recebimentos dos documentos | 1h | 2014-09-30 11:00 A | 2014-09-30 12:00 | 95 | 1h | 0d | Analista Dedalus | 1h | 1.5 |
| 105 | 4.4.3 | **Criação do workflow** | 0.88d | 2014-10-01 08:00 A | 2014-10-01 16:00 | 94 | 0.88d | 0d |  | 5h | 7.5 |
| 106 | 4.4.3.1 | Criação de 2 etapas com notificações e permissões | 4h | 2014-10-01 08:00 A | 2014-10-01 12:00 |  | 4h | 0d | Analista Dedalus | 4h | 6 |
| 107 | 4.4.3.2 | Atribuição dos acessos | 1h | 2014-10-01 15:00 A | 2014-10-01 16:00 | 106 | 1h | 0d | Analista Dedalus | 1h | 1.5 |
| 108 | 4.4.4 | **Relatórios** | 1d | 2014-10-01 16:00 A | 2014-10-02 16:00 | 105 | 1d | 0d |  | 8h | 12 |
| 109 | 4.4.4.1 | Instalação e configuração do script para exportar em Google Spreadsheet | 1d | 2014-10-01 16:00 A | 2014-10-02 16:00 |  | 1d | 0d | Analista Dedalus | 8h | 12 |
| 110 | 4.4.5 | Testes e correções | 2d | 2014-10-02 16:00 A | 2014-10-06 16:00 | 108 | 2d | 0d | Analista Dedalus; WRR | 32h | 24 |

| ID | WBS | Task | Duration | Start | Finish | Predecessors | Remaining | Total slack | Resources | Work | Cost |
| --- | --- | --- | --- | --- | --- | --- | --- | --- | --- | --- | --- |
| 111 | 4.5 | **Documentos de Faturamento** | 7.5d | 2014-10-06 16:00 A | 2014-10-16 11:00 | 92 | 7.5d | 0d |  | 63h | 70.5 |
| 112 | 4.5.1 | Criação da biblioteca | 1h | 2014-10-06 16:00 A | 2014-10-06 17:00 |  | 1h | 0d | Analista Dedalus | 1h | 1.5 |
| 113 | 4.5.2 | **Preparação** | 2.25d | 2014-10-07 08:00 A | 2014-10-09 10:00 | 112 | 2.25d | 0d |  | 15h | 22.5 |
| 114 | 4.5.2.1 | **Configuração das classes de documento** | 0.62d | 2014-10-07 08:00 A | 2014-10-07 14:00 |  | 0.62d | 0d |  | 6h | 9 |
| 115 | 4.5.2.1.1 | Documentos de Faturamento (principal) | 1h | 2014-10-07 08:00 A | 2014-10-07 09:00 |  | 1h | 0d | Analista Dedalus | 1h | 1.5 |
| 116 | 4.5.2.1.2 | Coligadas | 1h | 2014-10-07 09:00 A | 2014-10-07 10:00 |  | 1h | 0d | Analista Dedalus | 1h | 1.5 |
| 117 | 4.5.2.1.3 | Contratos | 1h | 2014-10-07 10:00 A | 2014-10-07 11:00 |  | 1h | 0d | Analista Dedalus | 1h | 1.5 |
| 118 | 4.5.2.1.4 | Tipos de documento | 1h | 2014-10-07 11:00 A | 2014-10-07 12:00 |  | 1h | 0d | Analista Dedalus | 1h | 1.5 |
| 119 | 4.5.2.1.5 | Meses | 1h | 2014-10-07 13:00 A | 2014-10-07 14:00 |  | 1h | 0d | Analista Dedalus | 1h | 1.5 |
| 120 | 4.5.2.1.6 | Anos | 1h | 2014-10-07 13:00 A | 2014-10-07 14:00 |  | 1h | 0d | Analista Dedalus | 1h | 1.5 |
| 121 | 4.5.2.2 | Instalação e configuração dos scripts para importação das tabelas associadas | 4h | 2014-10-08 10:00 A | 2014-10-08 15:00 | 114 | 4h | 0d | Analista Dedalus | 4h | 6 |
| 122 | 4.5.2.3 | Configuração das relações entre as classes | 2h | 2014-10-08 10:00 A | 2014-10-08 12:00 | 114 | 2h | 0d | Analista Dedalus | 2h | 3 |
| 123 | 4.5.2.4 | Configuração dos papéis | 2h | 2014-10-08 13:00 A | 2014-10-08 15:00 | 114 | 2h | 0d | Analista Dedalus | 2h | 3 |
| 124 | 4.5.2.5 | Configuração do email para recebimentos dos documentos | 1h | 2014-10-09 09:00 A | 2014-10-09 10:00 | 114 | 1h | 0d | Analista Dedalus | 1h | 1.5 |
| 125 | 4.5.3 | **Criação do workflow** | 0.88d | 2014-10-10 13:00 A | 2014-10-13 11:00 | 113 | 0.88d | 0d |  | 7h | 10.5 |
| 126 | 4.5.3.1 | Criação de 3 etapas com notificações e permissões | 6h | 2014-10-10 13:00 A | 2014-10-13 10:00 |  | 6h | 0d | Analista Dedalus | 6h | 9 |
| 127 | 4.5.3.2 | Atribuição dos acessos | 1h | 2014-10-13 10:00 A | 2014-10-13 11:00 | 126 | 1h | 0d | Analista Dedalus | 1h | 1.5 |
| 128 | 4.5.4 | **Relatórios** | 1d | 2014-10-13 11:00 A | 2014-10-14 11:00 | 125 | 1d | 0d |  | 8h | 12 |
| 129 | 4.5.4.1 | Instalação e configuração do script para exportar em Google Spreadsheet | 1d | 2014-10-13 11:00 A | 2014-10-14 11:00 |  | 1d | 0d | Analista Dedalus | 8h | 12 |
| 130 | 4.5.5 | Teste e correções | 2d | 2014-10-14 11:00 A | 2014-10-16 11:00 | 128 | 2d | 0d | Analista Dedalus; WRR | 32h | 24 |
| 131 | 4.6 | **Documentos de Mensais do DP** | 7d | 2014-10-16 11:00 A | 2014-10-27 11:00 | 111 | 7d | 0d |  | 62h | 69 |
| 132 | 4.6.1 | Criação da biblioteca | 1h | 2014-10-16 11:00 A | 2014-10-16 12:00 |  | 1h | 0d | Analista Dedalus | 1h | 1.5 |
| 133 | 4.6.2 | **Preparação** | 2.62d | 2014-10-16 13:00 A | 2014-10-21 09:00 | 132 | 2.62d | 0d |  | 16h | 24 |
| 134 | 4.6.2.1 | **Configuração das classes de documento** | 0.88d | 2014-10-16 13:00 A | 2014-10-17 11:00 |  | 0.88d | 0d |  | 7h | 10.5 |
| 135 | 4.6.2.1.1 | Documentos de Mensais do DP (principal) | 1h | 2014-10-16 13:00 A | 2014-10-16 14:00 |  | 1h | 0d | Analista Dedalus | 1h | 1.5 |
| 136 | 4.6.2.1.2 | Coligadas | 1h | 2014-10-16 14:00 A | 2014-10-16 15:00 |  | 1h | 0d | Analista Dedalus | 1h | 1.5 |
| 137 | 4.6.2.1.3 | Contratos | 1h | 2014-10-16 15:00 A | 2014-10-16 16:00 |  | 1h | 0d | Analista Dedalus | 1h | 1.5 |
| 138 | 4.6.2.1.4 | Tipos de documento | 1h | 2014-10-16 16:00 A | 2014-10-16 17:00 |  | 1h | 0d | Analista Dedalus | 1h | 1.5 |
| 139 | 4.6.2.1.5 | CPFs | 1h | 2014-10-17 08:00 A | 2014-10-17 09:00 |  | 1h | 0d | Analista Dedalus | 1h | 1.5 |
| 140 | 4.6.2.1.6 | Meses | 1h | 2014-10-17 09:00 A | 2014-10-17 10:00 |  | 1h | 0d | Analista Dedalus | 1h | 1.5 |
| 141 | 4.6.2.1.7 | Anos | 1h | 2014-10-17 10:00 A | 2014-10-17 11:00 |  | 1h | 0d | Analista Dedalus | 1h | 1.5 |
| 142 | 4.6.2.2 | Instalação e configuração dos scripts para importação das tabelas associadas | 4h | 2014-10-20 09:00 A | 2014-10-20 14:00 | 134 | 4h | 0d | Analista Dedalus | 4h | 6 |
| 143 | 4.6.2.3 | Configuração das relações entre as classes | 2h | 2014-10-20 10:00 A | 2014-10-20 12:00 | 134 | 2h | 0d | Analista Dedalus | 2h | 3 |
| 144 | 4.6.2.4 | Configuração dos papéis | 2h | 2014-10-20 11:00 A | 2014-10-20 14:00 | 134 | 2h | 0d | Analista Dedalus | 2h | 3 |
| 145 | 4.6.2.5 | Configuração do email para recebimentos dos documentos | 1h | 2014-10-21 08:00 A | 2014-10-21 09:00 | 134 | 1h | 0d | Analista Dedalus | 1h | 1.5 |

| ID | WBS | Task | Duration | Start | Finish | Predecessors | Remaining | Total slack | Resources | Work | Cost |
| --- | --- | --- | --- | --- | --- | --- | --- | --- | --- | --- | --- |
| 146 | 4.6.3 | **Criação do workflow** | 0.88d | 2014-10-21 13:00 A | 2014-10-22 11:00 | 133 | 0.88d | 0d |  | 5h | 7.5 |
| 147 | 4.6.3.1 | Criação de 2 etapas com notificações e permissões | 4h | 2014-10-21 13:00 A | 2014-10-21 17:00 |  | 4h | 0d | Analista Dedalus | 4h | 6 |
| 148 | 4.6.3.2 | Atribuição dos acessos | 1h | 2014-10-22 10:00 A | 2014-10-22 11:00 | 147 | 1h | 0d | Analista Dedalus | 1h | 1.5 |
| 149 | 4.6.4 | **Relatórios** | 1d | 2014-10-22 11:00 A | 2014-10-23 11:00 | 146 | 1d | 0d |  | 8h | 12 |
| 150 | 4.6.4.1 | Instalação e configuração do script para exportar em Google Spreadsheet | 1d | 2014-10-22 11:00 A | 2014-10-23 11:00 |  | 1d | 0d | Analista Dedalus | 8h | 12 |
| 151 | 4.6.5 | Testes e correções | 2d | 2014-10-23 11:00 A | 2014-10-27 11:00 | 149 | 2d | 0d | Analista Dedalus; WRR | 32h | 24 |
| 152 | 4.7 | **RIC – Resumo de Informações Contratuais** | 9d | 2014-10-27 11:00 A | 2014-11-07 11:00 | 131 | 9d | 0d |  | 72h | 84 |
| 153 | 4.7.1 | Criação da biblioteca | 1h | 2014-10-27 11:00 A | 2014-10-27 12:00 |  | 1h | 0d | Analista Dedalus | 1h | 1.5 |
| 154 | 4.7.2 | **Preparação** | 2.62d | 2014-10-27 13:00 A | 2014-10-30 09:00 | 153 | 2.62d | 0d |  | 16h | 24 |
| 155 | 4.7.2.1 | **Configuração das classes de documento** | 0.88d | 2014-10-27 13:00 A | 2014-10-28 11:00 |  | 0.88d | 0d |  | 7h | 10.5 |
| 156 | 4.7.2.1.1 | RIC – Resumo de Informações Contratuais (principal) | 1h | 2014-10-27 13:00 A | 2014-10-27 14:00 |  | 1h | 0d | Analista Dedalus | 1h | 1.5 |
| 157 | 4.7.2.1.2 | Coligadas | 1h | 2014-10-27 14:00 A | 2014-10-27 15:00 |  | 1h | 0d | Analista Dedalus | 1h | 1.5 |
| 158 | 4.7.2.1.3 | Contratos | 1h | 2014-10-27 15:00 A | 2014-10-27 16:00 |  | 1h | 0d | Analista Dedalus | 1h | 1.5 |
| 159 | 4.7.2.1.4 | Tipos de documento | 1h | 2014-10-27 16:00 A | 2014-10-27 17:00 |  | 1h | 0d | Analista Dedalus | 1h | 1.5 |
| 160 | 4.7.2.1.5 | CPFs | 1h | 2014-10-28 08:00 A | 2014-10-28 09:00 |  | 1h | 0d | Analista Dedalus | 1h | 1.5 |
| 161 | 4.7.2.1.6 | Meses | 1h | 2014-10-28 09:00 A | 2014-10-28 10:00 |  | 1h | 0d | Analista Dedalus | 1h | 1.5 |
| 162 | 4.7.2.1.7 | Anos | 1h | 2014-10-28 10:00 A | 2014-10-28 11:00 |  | 1h | 0d | Analista Dedalus | 1h | 1.5 |
| 163 | 4.7.2.2 | Instalação e configuração dos scripts para importação das tabelas associadas | 4h | 2014-10-29 09:00 A | 2014-10-29 14:00 | 155 | 4h | 0d | Analista Dedalus | 4h | 6 |
| 164 | 4.7.2.3 | Configuração das relações entre as classes | 2h | 2014-10-29 13:00 A | 2014-10-29 15:00 | 155 | 2h | 0d | Analista Dedalus | 2h | 3 |
| 165 | 4.7.2.4 | Configuração dos papéis | 2h | 2014-10-29 11:00 A | 2014-10-29 14:00 | 155 | 2h | 0d | Analista Dedalus | 2h | 3 |
| 166 | 4.7.2.5 | Configuração do email para recebimentos dos documentos | 1h | 2014-10-30 08:00 A | 2014-10-30 09:00 | 155 | 1h | 0d | Analista Dedalus | 1h | 1.5 |
| 167 | 4.7.3 | **Criação do workflow** | 1.88d | 2014-10-31 13:00 A | 2014-11-04 11:00 | 154 | 1.88d | 0d |  | 15h | 22.5 |
| 168 | 4.7.3.1 | Criação de 7 etapas com notificações e permissões | 14h | 2014-10-31 13:00 A | 2014-11-04 10:00 |  | 14h | 0d | Analista Dedalus | 14h | 21 |
| 169 | 4.7.3.2 | Atribuição dos acessos | 1h | 2014-11-04 10:00 A | 2014-11-04 11:00 | 168 | 1h | 0d | Analista Dedalus | 1h | 1.5 |

| ID | WBS | Task | Duration | Start | Finish | Predecessors | Remaining | Total slack | Resources | Work | Cost |
| --- | --- | --- | --- | --- | --- | --- | --- | --- | --- | --- | --- |
| 170 | 4.7.4 | **Relatórios** | 1d | 2014-11-04 11:00 A | 2014-11-05 11:00 | 167 | 1d | 0d |  | 8h | 12 |
| 171 | 4.7.4.1 | Instalação e configuração do script para exportar em Google Spreadsheet | 1d | 2014-11-04 11:00 A | 2014-11-05 11:00 |  | 1d | 0d | Analista Dedalus | 8h | 12 |
| 172 | 4.7.5 | Testes e correções | 2d | 2014-11-05 11:00 A | 2014-11-07 11:00 | 170 | 2d | 0d | Analista Dedalus; WRR | 32h | 24 |
| 173 | 4.8 | **Fluxo de Repositório de Documentos** | 8.62d | 2014-11-07 11:00 A | 2014-11-19 17:00 | 152 | 8.62d | 0d |  | 85h | 103.5 |
| 174 | 4.8.1 | Criação da biblioteca | 1h | 2014-11-07 11:00 A | 2014-11-07 12:00 |  | 1h | 0d | Analista Dedalus | 1h | 1.5 |
| 175 | 4.8.2 | **Preparação** | 0.38d | 2014-11-07 13:00 A | 2014-11-07 16:00 | 174 | 0.38d | 0d |  | 3h | 4.5 |
| 176 | 4.8.2.1 | **Configuração das classes de documento** | 0.12d | 2014-11-07 13:00 A | 2014-11-07 14:00 |  | 0.12d | 0d |  | 1h | 1.5 |
| 177 | 4.8.2.1.1 | Fluxo de Repositório de Documentos (principal) | 1h | 2014-11-07 13:00 A | 2014-11-07 14:00 |  | 1h | 0d | Analista Dedalus | 1h | 1.5 |
| 178 | 4.8.2.2 | Configuração dos papéis | 2h | 2014-11-07 14:00 A | 2014-11-07 16:00 | 176 | 2h | 0d | Analista Dedalus | 2h | 3 |
| 179 | 4.8.3 | **Processo de movimentação** | 5.12d | 2014-11-07 16:00 A | 2014-11-14 17:00 | 175 | 5.12d | 0d |  | 41h | 61.5 |
| 180 | 4.8.3.1 | Criação do processo de movimentação | 5d | 2014-11-07 16:00 A | 2014-11-14 16:00 |  | 5d | 0d | Analista Dedalus | 40h | 60 |
| 181 | 4.8.3.2 | Atribuição dos acessos | 1h | 2014-11-14 16:00 A | 2014-11-14 17:00 | 180 | 1h | 0d | Analista Dedalus | 1h | 1.5 |
| 182 | 4.8.4 | **Relatórios** | 1d | 2014-11-17 08:00 A | 2014-11-17 17:00 | 179 | 1d | 0d |  | 8h | 12 |
| 183 | 4.8.4.1 | Instalação e configuração do script para exportar em Google Spreadsheet | 1d | 2014-11-17 08:00 A | 2014-11-17 17:00 |  | 1d | 0d | Analista Dedalus | 8h | 12 |
| 184 | 4.8.5 | Testes e correções | 2d | 2014-11-18 08:00 A | 2014-11-19 17:00 | 182 | 2d | 0d | Analista Dedalus; WRR | 32h | 24 |
| 185 | 5 | **Phase-out** | 60d? | 2014-08-29 08:00 A | 2014-11-21 17:00 |  | 60d? | 0d |  | 24h | 24 |
| 186 | 5.1 | Apresentação do AODocs para a Solvian | 1d? | 2014-08-29 08:00 A | 2014-08-29 17:00 | 2 | 1d? | 0d | Analista Dedalus; AODocs | 16h | 12 |
| 187 | 5.2 | Treinamento para manutenção dos fluxos criados | 1d? | 2014-11-21 08:00 A | 2014-11-21 17:00 | 33, 186 | 1d? | 0d | Analista Dedalus | 8h | 12 |
